# Sony e-DMA Master Plan

Schedule from MS Project, 2011-02-09 to 2011-12-20, status date 2011-02-25, costs in ￥, A marks actual dates.
Microsoft Corporation

## Calendars

- Standard: Mon-Fri 09:00-12:30, 13:30-18:00; Sat-Sun off. Exceptions (off unless hours are given): 2011-04-30 to 2011-05-02.

## Resources

| Resource | Rate |
| --- | --- |
| 张文杰 | 1 |
| 汪鹏 | 1 |
| 张伟 | 1 |
| 尧敏华 | 1 |
| 开发组 | 1 |
| 关键用户 | 1 |
| 项目组 | 1 |
| 李凌 | 1 |
| 美工 | 1 |
| 百胜 | 1 |
| 测试组 | 1 |
| 田凯 | 1 |
| 张三 |  |
| 张四 |  |
| 李四 |  |
| 李五 |  |
| 王六 |  |
| 客户 |  |
| 田七 |  |

## Schedule

| ID | WBS | Task | Type | Duration | Start | Finish | Predecessors | Complete | Remaining | Baseline start | Baseline finish | Baseline duration | Baseline 1 start | Baseline 1 finish | Total slack | Constraint | Resources | Work | Actual work | Cost | Actual cost | 交付物 |
| --- | --- | --- | --- | --- | --- | --- | --- | --- | --- | --- | --- | --- | --- | --- | --- | --- | --- | --- | --- | --- | --- | --- |
| 1 | 1 | *******项目** |  | 223.94d? | 2011-02-09 A | 2011-12-20 |  | 77% | 51.93d? | 2006-06-29 | 2006-10-18 | 80d | 2011-02-09 | 2011-09-28 | 0d |  |  | 4908h | 3100h | 988 | 772 |  |
| 2 | 1.1 | **Define** |  | 49d? | 2011-02-09 A | 2011-04-18 A |  | 100% |  | 2006-06-29 | 2006-07-14 | 12d | 2011-02-09 | 2011-03-28 |  |  |  | 1224h | 1224h | 504 | 504 |  |
| 3 | 1.1.1 | **里程碑** |  | 44d | 2011-02-14 A | 2011-04-15 A |  | 100% |  | 2006-07-03 | 2006-07-14 | 9d | 2011-02-14 | 2011-03-28 |  |  |  |  |  |  |  |  |
| 4 | 1.1.1.1 | 项目启动会议 | milestone | 0d | 2011-02-14 A | 2011-02-14 A | 8FF | 100% |  | 2006-07-03 | 2006-07-03 | 0d | 2011-02-14 | 2011-02-14 |  | start no earlier than 2008-08-06 |  |  |  |  |  | 项目启动会ppt，WBS |
| 5 | 1.1.1.2 | 需求评审及签署 | milestone | 0d | 2011-04-15 A | 2011-04-15 A | 30FF | 100% |  | 2006-07-03 | 2006-07-03 | 0d | 2011-03-28 | 2011-03-28 |  | start no earlier than 2008-08-22 |  |  |  |  |  | 需求规格说明书 |
| 6 | 1.1.2 | **项目准备** |  | 49d? | 2011-02-09 A | 2011-04-18 A |  | 100% |  | 2006-06-29 | 2006-07-14 | 12d | 2011-02-09 | 2011-03-18 |  |  |  | 488h | 488h | 56 | 56 |  |
| 7 | 1.1.2.1 | 项目组建立与成员沟通 |  | 3d | 2011-02-09 A | 2011-02-11 A |  | 100% |  | 2006-06-30 | 2006-06-30 | 1d | 2011-02-09 | 2011-02-11 |  | start no earlier than 2011-02-09 | 项目组 | 24h | 24h | 24 | 24 | 项目组通讯录 |
| 8 | 1.1.2.2 | 项目启动会议 | milestone | 1d | 2011-02-14 A | 2011-02-14 A |  | 100% |  |  |  |  | 2011-02-14 | 2011-02-14 |  | start no earlier than 2011-02-14 | 项目组 | 8h | 8h | 8 | 8 |  |
| 9 | 1.1.2.3 | 项目管理与开发环境准备 |  | 3d | 2011-02-15 A | 2011-02-17 A | 8 | 100% |  |  |  |  | 2011-02-15 | 2011-02-17 |  |  | 开发组 | 24h | 24h | 24 | 24 |  |
| 10 | 1.1.2.4 | 制定项目计划 |  | 2d | 2011-02-15 A | 2011-02-16 A | 8 | 100% |  |  |  |  | 2011-02-15 | 2011-02-16 |  | finish no earlier than 2008-08-08 | 张三 | 16h | 16h |  |  |  |
| 11 | 1.1.2.5 | 确定项目目标与范围 | milestone | 0d | 2011-02-17 A | 2011-02-18 A | 10 | 100% |  |  |  |  | 2011-02-17 | 2011-02-18 |  | finish no earlier than 2008-08-08 | 张三; 张四 |  |  |  |  |  |
| 12 | 1.1.2.6 | 风险分析 | milestone | 0d | 2011-02-21 A | 2011-02-22 A | 11 | 100% |  |  |  |  | 2011-02-21 | 2011-02-22 |  | finish no earlier than 2008-08-15 | 张三; 张四 |  |  |  |  |  |
| 13 | 1.1.2.7 | **服务器准备** |  | 46d? | 2011-02-14 A | 2011-04-18 A |  | 100% |  |  |  |  | 2011-02-14 | 2011-03-18 |  |  |  | 416h | 416h |  |  |  |
| 14 | 1.1.2.7.1 | 硬件标准确定 |  | 5d? | 2011-02-14 A | 2011-02-18 A |  | 100% |  |  |  |  | 2011-02-14 | 2011-02-18 |  | finish no earlier than 2011-02-18 | 客户 | 40h | 40h |  |  |  |
| 15 | 1.1.2.7.2 | 服务器采购 |  | 41d? | 2011-02-21 A | 2011-04-18 A | 14 | 100% |  |  |  |  | 2011-02-21 | 2011-03-18 |  | finish no earlier than 2011-04-18 | 客户 | 328h | 328h |  |  |  |
| 16 | 1.1.2.7.3 | 项目组无线帐号申请 |  | 5d? | 2011-02-14 A | 2011-02-18 A |  | 100% |  |  |  |  | 2011-02-14 | 2011-02-18 |  | finish no earlier than 2011-02-18 | 客户 | 40h | 40h |  |  |  |
| 17 | 1.1.2.7.4 | 双周会议室预订 |  | 1d? | 2011-02-24 A | 2011-02-24 A |  | 100% |  |  |  |  | 2011-02-24 | 2011-02-24 |  | start no earlier than 2011-02-24 | 客户 | 8h | 8h |  |  |  |
| 18 | 1.1.3 | **需求分析与确认** |  | 41d | 2011-02-18 A | 2011-04-15 A |  | 100% |  |  |  |  | 2011-02-18 | 2011-03-28 |  |  |  | 296h | 296h | 256 | 256 |  |
| 19 | 1.1.3.1 | 原型功能描述文档 | milestone | 0d | 2011-02-18 A | 2011-02-21 A | 9 | 100% |  |  |  |  | 2011-02-18 | 2011-02-21 |  | start no earlier than 2011-02-18 | 张三; 张四 |  |  |  |  |  |
| 20 | 1.1.3.2 | 原型演示与需求讨论（与IT部门） | milestone | 0d | 2011-02-22 A | 2011-02-22 A | 19 | 100% |  | 2006-07-03 | 2006-07-03 | 0.5d | 2011-02-22 | 2011-02-22 |  | finish no earlier than 2008-08-13 | 张三; 李五; 张四; 李四 |  |  |  |  |  |
| 21 | 1.1.3.3 | 搭建原型环境 |  | 4d | 2011-02-18 A | 2011-02-23 A | 9 | 100% |  | 2006-07-03 | 2006-07-03 | 0.5d | 2011-02-18 | 2011-02-23 |  | start no earlier than 2008-08-07 | 开发组 | 32h | 32h | 32 | 32 | 虚拟机 |
| 22 | 1.1.3.4 | 需求调整 | milestone | 0d | 2011-02-23 A | 2011-02-24 A | 20 | 100% |  |  |  |  | 2011-02-23 | 2011-02-24 |  |  | 张三; 张四; 李四 |  |  |  |  |  |
| 23 | 1.1.3.5 | 技术需求确认 | milestone | 0d | 2011-02-25 A | 2011-02-25 A | 22 | 100% |  |  |  |  | 2011-02-25 | 2011-02-25 |  | finish no earlier than 2008-08-15 | 张三; 李五; 张四 |  |  |  |  |  |
| 24 | 1.1.3.6 | 需求调整再确认 | milestone | 0d | 2011-02-28 A | 2011-03-04 A | 23 | 100% |  |  |  |  | 2011-02-28 | 2011-03-04 |  |  | 李四; 张三; 张四 |  |  |  |  |  |
| 25 | 1.1.3.7 | UI原型设计 |  | 7d | 2011-02-24 A | 2011-03-04 A | 21 | 100% |  |  |  |  | 2011-02-24 | 2011-03-04 |  |  | 美工 | 56h | 56h | 56 | 56 | RMS管理网站，批量加密工具，右键弹出界面 |
| 26 | 1.1.3.8 | 确定Core User | milestone | 0d | 2011-03-07 A | 2011-03-10 A | 24 | 100% |  |  |  |  | 2011-03-07 | 2011-03-10 |  |  | 客户; 张三 |  |  |  |  |  |
| 27 | 1.1.3.9 | UI原型改进 |  | 6d | 2011-03-07 A | 2011-03-14 A | 24 | 100% |  |  |  |  | 2011-03-07 | 2011-03-14 |  |  | 美工; 张三 | 48h | 48h | 48 | 48 |  |
| 28 | 1.1.3.10 | 需求规格说明书撰写 | milestone | 0d | 2011-03-15 A | 2011-03-17 A | 27 | 100% |  |  |  |  | 2011-03-15 | 2011-03-17 |  |  | 张三; 张四; 李四 |  |  |  |  |  |
| 29 | 1.1.3.11 | 需求规格说明书内部评审及修改 | milestone | 0d | 2011-04-07 A | 2011-04-08 A | 28 | 100% |  |  |  |  | 2011-03-18 | 2011-03-21 |  | finish no earlier than 2011-04-08 | 张三; 张四; 李四 |  |  |  |  |  |
| 30 | 1.1.3.12 | 需求规格说明书评审 | milestone | 5d | 2011-04-11 A | 2011-04-15 A | 29 | 100% |  |  |  |  | 2011-03-22 | 2011-03-28 |  | start no earlier than 2008-08-22 | 李五 | 40h | 40h |  |  |  |
| 31 | 1.1.3.13 | 测试用例编写 |  | 15d | 2011-02-28 A | 2011-03-18 A | 23 | 100% |  |  |  |  | 2011-02-28 | 2011-03-18 |  |  | 测试组 | 120h | 120h | 120 | 120 |  |

Notes:
- 27: 为用户演示做准备

| ID | WBS | Task | Type | Duration | Start | Finish | Predecessors | Complete | Remaining | Baseline start | Baseline finish | Baseline duration | Baseline 1 start | Baseline 1 finish | Total slack | Free slack | Constraint | Resources | Work | Actual work | Cost | Actual cost | 交付物 |
| --- | --- | --- | --- | --- | --- | --- | --- | --- | --- | --- | --- | --- | --- | --- | --- | --- | --- | --- | --- | --- | --- | --- | --- |
| 32 | 1.1.4 | **技术准备** |  | 25d? | 2011-02-18 A | 2011-03-24 A |  | 100% |  |  |  |  | 2011-02-18 | 2011-03-24 |  |  |  |  | 440h | 440h | 192 | 192 |  |
| 33 | 1.1.4.1 | 知识传输 |  | 7d? | 2011-02-18 A | 2011-02-28 A | 9 | 100% |  |  |  |  | 2011-02-18 | 2011-02-28 |  |  | start no earlier than 2011-02-15 | 开发组 | 56h | 56h | 56 | 56 | 测试Leader介入 |
| 34 | 1.1.4.2 | 技术方案验证 |  | 17d? | 2011-03-01 A | 2011-03-23 A | 33 | 100% |  |  |  |  | 2011-03-01 | 2011-03-23 |  |  | finish no earlier than 2011-03-23 | 开发组 | 136h | 136h | 136 | 136 |  |
| 35 | 1.1.4.3 | **技术验证 |  | 17d? | 2011-03-01 A | 2011-03-23 A |  | 100% |  |  |  |  | 2011-03-01 | 2011-03-23 |  |  | finish no earlier than 2011-03-23 | 客户 | 136h | 136h |  |  |  |
| 36 | 1.1.4.4 | Web Service大附件传输方案 | milestone | 0d | 2011-03-07 A | 2011-03-18 A |  | 100% |  |  |  |  | 2011-03-07 | 2011-03-18 |  |  | start no earlier than 2011-03-07 | 李四; 张三 |  |  |  |  |  |
| 37 | 1.1.4.5 | 管理网站原型-共享目录以及权限模板 |  | 14d | 2011-03-07 A | 2011-03-24 A |  | 100% |  |  |  |  | 2011-03-07 | 2011-03-24 |  |  | finish no earlier than 2011-03-24 | 李四 | 112h | 112h |  |  |  |
| 38 | 1.1.4.6 | File Server原型开发改进 | milestone | 0d | 2011-03-07 A | 2011-03-24 A |  | 100% |  |  |  |  | 2011-03-07 | 2011-03-24 |  |  | finish no earlier than 2011-03-24 | 张四; 王六 |  |  |  |  |  |
| 39 | 1.1.4.7 | Power Reader原型开发改进 | milestone | 0d | 2011-03-14 A | 2011-03-24 A |  | 100% |  |  |  |  | 2011-03-14 | 2011-03-24 |  |  | finish no earlier than 2011-03-24 | 张四; 王六 |  |  |  |  |  |
| 40 | 1.2 | **Design** |  | 77d? | 2011-02-28 A | 2011-06-15 |  | 31% | 52.94d? | 2006-07-17 | 2006-07-24 | 6d | 2011-02-28 | 2011-03-25 | 133.94d |  |  |  | 288h | 40h | 40 | 40 |  |
| 41 | 1.2.1 | **里程碑** |  | 0d | 2011-06-15 | 2011-06-15 |  |  |  | 2006-07-24 | 2006-07-24 | 0d | 2011-03-24 | 2011-03-24 | 133.94d |  |  |  |  |  |  |  |  |
| 42 | 1.2.1.1 | 设计方案评审及确认 | milestone | 0d | 2011-06-15 | 2011-06-15 | 60FF |  |  | 2006-07-24 | 2006-07-24 | 0d | 2011-03-24 | 2011-03-24 | 133.94d |  | start no earlier than 2008-08-29 |  |  |  |  |  | 《架构设计说明书》和《组件详细设计说明书》 |
| 43 | 1.2.2 | **架构设计** |  | 68d | 2011-02-28 A | 2011-06-02 |  |  | 68d | 2006-07-17 | 2006-07-24 | 6d | 2011-02-28 | 2011-03-04 | 133.94d |  |  |  | 32h |  |  |  |  |
| 44 | 1.2.2.1 | 安全架构设计 | milestone | 0d | 2011-02-28 A | 2011-02-28 A | 23 | 100% |  |  |  |  | 2011-02-28 | 2011-02-28 |  |  | start no earlier than 2008-08-19 | 张四; 王六 |  |  |  |  |  |
| 45 | 1.2.2.2 | 工作流平台设计 | milestone | 0d | 2011-02-28 A | 2011-02-28 A | 44 | 100% |  |  |  |  | 2011-02-28 | 2011-02-28 |  |  | start no earlier than 2008-08-21 | 张四; 王六 |  |  |  |  |  |
| 46 | 1.2.2.3 | RMS管理网站设计 | milestone | 0d | 2011-03-01 A | 2011-03-01 A | 45 | 100% |  |  |  |  | 2011-03-01 | 2011-03-01 |  |  | start no earlier than 2008-08-22 | 张四; 王六 |  |  |  |  |  |
| 47 | 1.2.2.4 | 数据库设计 | milestone | 0d | 2011-03-01 A | 2011-03-01 A | 46 | 100% |  |  |  |  | 2011-03-01 | 2011-03-01 |  |  | start no earlier than 2008-08-20 | 张四; 王六 |  |  |  |  |  |
| 48 | 1.2.2.5 | 灾备设计 | milestone | 0d | 2011-03-02 A | 2011-03-02 A | 47 | 100% |  |  |  |  | 2011-03-02 | 2011-03-02 |  |  |  | 张四; 王六 |  |  |  |  |  |
| 49 | 1.2.2.6 | 部署方案设计 | milestone | 0d | 2011-03-02 A | 2011-03-02 A | 48 | 100% |  |  |  |  | 2011-03-02 | 2011-03-02 |  |  |  | 张四; 王六 |  |  |  |  |  |
| 50 | 1.2.2.7 | 架构设计说明书撰写 |  | 2d | 2011-06-01 | 2011-06-02 |  |  |  |  |  |  | 2011-03-03 | 2011-03-04 | 133.94d | 0d | start no earlier than 2011-06-01 | 张四; 王六 | 32h |  |  |  |  |
| 51 | 1.2.3 | **功能模块设计** |  | 65d | 2011-03-07 A | 2011-06-06 |  |  | 65d | 2006-07-17 | 2006-07-24 | 6d | 2011-03-07 | 2011-03-15 | 133.94d | 0d |  |  | 32h |  |  |  |  |
| 52 | 1.2.3.1 | File Server模块设计 | milestone | 0d | 2011-03-07 A | 2011-03-07 A | 43 | 100% |  |  |  |  | 2011-03-07 | 2011-03-07 |  |  | start no earlier than 2008-08-18 | 王六; 张四 |  |  |  |  |  |
| 53 | 1.2.3.2 | 客户端模块设计 | milestone | 0d | 2011-03-08 A | 2011-03-08 A | 52 | 100% |  |  |  |  | 2011-03-08 | 2011-03-08 |  |  | start no earlier than 2008-08-19 | 王六; 张四 |  |  |  |  |  |
| 54 | 1.2.3.3 | 权限审批模块设计 | milestone | 0d | 2011-03-09 A | 2011-03-09 A | 53 | 100% |  |  |  |  | 2011-03-09 | 2011-03-09 |  |  | start no earlier than 2008-08-20 | 王六; 张四 |  |  |  |  |  |
| 55 | 1.2.3.4 | RMS管理网站模块设计 | milestone | 0d | 2011-03-10 A | 2011-03-10 A | 54 | 100% |  |  |  |  | 2011-03-10 | 2011-03-10 |  |  | start no earlier than 2008-08-21 | 王六; 张四 |  |  |  |  |  |
| 56 | 1.2.3.5 | 第三方系统集成接口模块设计 | milestone | 0d | 2011-03-11 A | 2011-03-11 A | 55 | 100% |  |  |  |  | 2011-03-11 | 2011-03-11 |  |  | start no earlier than 2008-08-22 | 王六; 张四 |  |  |  |  |  |
| 57 | 1.2.3.6 | 功能组件详细设计说明书撰写 |  | 2d | 2011-06-03 | 2011-06-06 | 50 |  |  |  |  |  | 2011-03-14 | 2011-03-15 | 133.94d |  |  | 王六; 张四 | 32h |  |  |  |  |
| 58 | 1.2.4 | UI设计 |  | 5d | 2011-03-07 A | 2011-03-11 A | 43 | 100% |  |  |  |  | 2011-03-07 | 2011-03-11 |  |  | finish no earlier than 2008-08-29 | 美工 | 40h | 40h | 40 | 40 |  |
| 59 | 1.2.5 | 设计方案内部评审及修改 |  | 2d | 2011-06-07 | 2011-06-08 | 51 |  |  |  |  |  | 2011-03-16 | 2011-03-17 | 133.94d | 0d |  | 张三; 张四; 王六; 李四 | 64h |  |  |  |  |
| 60 | 1.2.6 | 设计方案评审及确认 |  | 5d | 2011-06-09 | 2011-06-15 | 59 |  |  |  |  |  | 2011-03-18 | 2011-03-24 | 133.94d | 0d | finish no earlier than 2008-08-29 | 张三; 李五; 张四 | 120h |  |  |  |  |
| 61 | 1.2.7 | 系统原型演示 | milestone | 0d? | 2011-03-25 A | 2011-03-25 A |  | 100% |  |  |  |  | 2011-03-25 | 2011-03-25 |  |  | start no earlier than 2011-03-25 | 客户; 李四; 张三; 张四 |  |  |  |  |  |

Notes:
- 49: AD RMS+AD FS
- 61: 业务用户参与

| ID | WBS | Task | Type | Duration | Start | Finish | Predecessors | Complete | Remaining | Baseline start | Baseline finish | Baseline duration | Baseline 1 start | Baseline 1 finish | Total slack | Constraint | Resources | Work | Actual work | Cost | Actual cost | 交付物 |
| --- | --- | --- | --- | --- | --- | --- | --- | --- | --- | --- | --- | --- | --- | --- | --- | --- | --- | --- | --- | --- | --- | --- |
| 62 | 1.3 | **Develop** |  | 147.94d? | 2011-03-28 A | 2011-10-20 |  | 78% | 31.86d? | 2006-07-25 | 2006-09-05 | 31d | 2011-03-28 | 2011-07-27 | 0d |  |  | 2692h | 1836h | 388 | 228 |  |
| 63 | 1.3.1 | **里程碑** |  | 131.94d | 2011-04-19 A | 2011-10-20 |  | 99% | 0d | 2006-08-09 | 2006-09-05 | 19d | 2011-03-29 | 2011-07-22 | 0d |  |  | 120h | 120h |  |  |  |
| 64 | 1.3.1.1 | 系统功能评审及确认 | milestone | 0d | 2011-10-20 | 2011-10-20 | 79FF |  |  |  |  |  | 2011-06-20 | 2011-06-20 | 0d | start no earlier than 2008-09-23 |  |  |  |  |  | 开发相关文档，规范代码及注释，系统实现功能清单 |
| 65 | 1.3.1.2 | 系统测试评审及确认 | milestone | 0d | 2011-10-12 | 2011-10-12 | 132FF |  |  | 2006-08-09 | 2006-08-09 | 0d | 2011-07-22 | 2011-07-22 | 5.94d | start no earlier than 2008-09-26 |  |  |  |  |  | 集成测试报告，UAT报告 |
| 66 | 1.3.1.3 | 服务器安装 |  | 15d | 2011-04-19 A | 2011-05-10 A | 2 | 100% |  |  |  |  | 2011-03-29 | 2011-04-18 |  |  | 客户 | 120h | 120h |  |  |  |
| 67 | 1.3.2 | **基础架构准备** |  | 1d | 2011-03-28 A | 2011-03-28 A |  | 100% |  |  |  |  | 2011-03-28 | 2011-03-28 |  |  |  |  |  |  |  |  |
| 68 | 1.3.2.1 | AD及网络环境 | milestone | 0d | 2011-03-28 A | 2011-03-28 A | 40 | 100% |  |  |  |  | 2011-03-28 | 2011-03-28 |  | finish no earlier than 2008-09-05 | 张三; 张四 |  |  |  |  |  |
| 69 | 1.3.3 | **开发环境准备** |  | 20d | 2011-03-29 A | 2011-04-25 A |  | 100% |  |  |  |  | 2011-03-29 | 2011-04-05 |  |  |  | 4h | 4h | 4 | 4 |  |
| 70 | 1.3.3.1 | 准备开发环境 |  | 0.5d | 2011-03-29 A | 2011-03-29 A | 67 | 100% |  |  |  |  | 2011-03-29 | 2011-03-29 |  | start no earlier than 2008-09-01 | 开发组 | 4h | 4h | 4 | 4 |  |
| 71 | 1.3.3.2 | 确立开发规范 | milestone | 0d | 2011-03-29 A | 2011-03-29 A | 70 | 100% |  |  |  |  | 2011-03-29 | 2011-03-29 |  | start no earlier than 2008-09-01 | 张四; 张三 |  |  |  |  |  |
| 72 | 1.3.3.3 | 准备生产环境 | milestone | 0d | 2011-04-19 A | 2011-04-25 A | 15 | 100% |  |  |  |  | 2011-03-30 | 2011-04-05 |  |  | 张三; 张四 |  |  |  |  |  |
| 73 | 1.3.4 | **UI开发** |  | 4d | 2011-03-30 A | 2011-04-04 A |  | 100% |  |  |  |  | 2011-04-06 | 2011-04-11 |  |  |  | 32h | 32h |  |  |  |
| 74 | 1.3.4.1 | RMS管理门户UI和版式实现 |  | 2d | 2011-03-30 A | 2011-03-31 A | 71 | 100% |  |  |  |  | 2011-04-06 | 2011-04-07 |  | finish no earlier than 2008-09-03 | 张四 | 16h | 16h |  |  |  |
| 75 | 1.3.4.2 | 客户端应用UI和版式实现 |  | 2d | 2011-04-01 A | 2011-04-04 A | 74 | 100% |  |  |  |  | 2011-04-08 | 2011-04-11 |  | finish no earlier than 2008-09-05 | 张四 | 16h | 16h |  |  |  |
| 76 | 1.3.5 | **架构开发** |  | 4d | 2011-03-30 A | 2011-04-04 A |  | 100% |  |  |  |  | 2011-04-06 | 2011-04-11 |  |  |  | 32h | 32h |  |  |  |
| 77 | 1.3.5.1 | 安全平台开发 |  | 2d | 2011-03-30 A | 2011-03-31 A | 71 | 100% |  |  |  |  | 2011-04-06 | 2011-04-07 |  | finish no earlier than 2008-09-05 | 张四 | 16h | 16h |  |  |  |
| 78 | 1.3.5.2 | 审批流程平台开发 |  | 2d | 2011-04-01 A | 2011-04-04 A | 77 | 100% |  |  |  |  | 2011-04-08 | 2011-04-11 |  | start no earlier than 2008-09-08 | 张四 | 16h | 16h |  |  |  |
| 79 | 1.3.6 | **功能模块开发** |  | 141.94d? | 2011-04-05 A | 2011-10-20 A |  | 100% |  |  |  |  | 2011-04-12 | 2011-06-20 |  |  |  | 1384h | 1384h |  |  |  |
| 80 | 1.3.6.1 | **File Server模块开发** |  | 71d | 2011-04-12 A | 2011-07-20 A |  | 100% |  |  |  |  | 2011-04-12 | 2011-04-21 |  |  |  | 288h | 288h |  |  |  |
| 81 | 1.3.6.1.1 | 加密模块 |  | 2d | 2011-04-12 A | 2011-04-13 A | 76 | 100% |  |  |  |  | 2011-04-12 | 2011-04-13 |  | start no earlier than 2008-09-02 | 张四 | 16h | 16h |  |  |  |
| 82 | 1.3.6.1.2 | 监控模块 |  | 2d | 2011-04-14 A | 2011-04-15 A | 81 | 100% |  |  |  |  | 2011-04-14 | 2011-04-15 |  | finish no earlier than 2008-09-10 | 张四 | 16h | 16h |  |  |  |
| 83 | 1.3.6.1.3 | 批量加密模块 |  | 2d | 2011-04-18 A | 2011-04-19 A | 82 | 100% |  |  |  |  | 2011-04-18 | 2011-04-19 |  | finish no earlier than 2008-09-12 | 张四 | 16h | 16h |  |  |  |
| 84 | 1.3.6.1.4 | Template Monitor |  | 5d | 2011-04-20 A | 2011-04-26 A | 83 | 100% |  |  |  |  |  |  |  |  | 张四 | 40h | 40h |  |  |  |
| 85 | 1.3.6.1.5 | 远程监控接口开发 |  | 5d | 2011-05-16 A | 2011-05-20 A |  | 100% |  |  |  |  | 2011-04-20 | 2011-04-21 |  | start no earlier than 2011-05-16 | 张四 | 40h | 40h |  |  |  |
| 86 | 1.3.6.1.6 | 日志管理 |  | 5d | 2011-05-23 A | 2011-05-27 A |  | 100% |  |  |  |  |  |  |  | start no earlier than 2011-05-23 | 张四 | 40h | 40h |  |  |  |
| 87 | 1.3.6.1.7 | 子目录监控 |  | 15d | 2011-06-30 A | 2011-07-20 A |  | 100% |  |  |  |  |  |  |  | start no earlier than 2011-06-30 | 张四 | 120h | 120h |  |  |  |

Notes:
- 85: 为其它应用程序提供远程监控接口

| ID | WBS | Task | Duration | Start | Finish | Predecessors | Complete | Baseline 1 start | Baseline 1 finish | Constraint | Resources | Work | Actual work |
| --- | --- | --- | --- | --- | --- | --- | --- | --- | --- | --- | --- | --- | --- |
| 88 | 1.3.6.2 | **文件格式支持开发** | 128.94d | 2011-04-22 A | 2011-10-20 A |  | 100% | 2011-04-22 | 2011-05-03 |  |  | 80h | 80h |
| 89 | 1.3.6.2.1 | wmv, wma | 3d | 2011-04-22 A | 2011-10-20 A | 80 | 100% | 2011-04-22 | 2011-04-26 | finish no earlier than 2008-09-04 | 张四 | 24h | 24h |
| 90 | 1.3.6.2.2 | Flash | 3d | 2011-04-27 A | 2011-04-29 A | 89 | 100% | 2011-04-27 | 2011-04-29 | finish no earlier than 2008-09-05 | 张四 | 24h | 24h |
| 91 | 1.3.6.2.3 | Jpg,bmp,tiff | 2d | 2011-05-02 A | 2011-05-04 A | 90 | 100% | 2011-05-02 | 2011-05-03 | finish no earlier than 2008-09-08 | 张四 | 16h | 16h |
| 92 | 1.3.6.2.4 | mmp,vsd,rar | 2d | 2011-05-04 A | 2011-05-05 A | 91 | 100% |  |  |  | 张四 | 16h | 16h |
| 93 | 1.3.6.3 | **客户端模块开发** | 30d | 2011-04-05 A | 2011-05-17 A |  | 100% | 2011-04-12 | 2011-04-25 |  |  | 288h | 288h |
| 94 | 1.3.6.3.1 | PowerReader | 2d | 2011-04-12 A | 2011-04-13 A | 76 | 100% | 2011-04-12 | 2011-04-13 | finish no earlier than 2008-09-11 | 王六 | 16h | 16h |
| 95 | 1.3.6.3.2 | 右键菜单 | 2d | 2011-04-14 A | 2011-04-15 A | 94 | 100% | 2011-04-14 | 2011-04-15 |  | 王六 | 16h | 16h |
| 96 | 1.3.6.3.3 | 解密临时文件保护 | 2d | 2011-04-18 A | 2011-04-19 A | 95 | 100% | 2011-04-18 | 2011-04-19 |  | 王六 | 16h | 16h |
| 97 | 1.3.6.3.4 | **客户端驻留程序及自动升级** | 30d | 2011-04-05 A | 2011-05-17 A | 76 | 100% | 2011-04-12 | 2011-04-25 |  |  | 240h | 240h |
| 98 | 1.3.6.3.4.1 | 客户端Daemon开发 | 15d | 2011-04-05 A | 2011-04-25 A | 76 | 100% |  |  |  | 田七 | 120h | 120h |
| 99 | 1.3.6.3.4.2 | 上传管理服务器组件开发 | 5d | 2011-04-26 A | 2011-05-03 A | 98 | 100% |  |  |  | 田七 | 40h | 40h |
| 100 | 1.3.6.3.4.3 | 服务器Daemon开发 | 10d | 2011-05-04 A | 2011-05-17 A | 99 | 100% |  |  |  | 田七 | 80h | 80h |
| 101 | 1.3.6.4 | **审批流程模块开发** | 38d | 2011-04-20 A | 2011-06-13 A |  | 100% | 2011-04-20 | 2011-05-23 |  |  | 312h | 312h |
| 102 | 1.3.6.4.1 | 流程开发 | 5d | 2011-04-20 A | 2011-04-26 A | 96 | 100% | 2011-04-20 | 2011-04-26 | start no earlier than 2008-09-02 | 王六 | 40h | 40h |
| 103 | 1.3.6.4.2 | 表单开发 | 5d | 2011-04-27 A | 2011-05-04 A | 102 | 100% | 2011-04-27 | 2011-05-03 | start no earlier than 2008-09-04 | 王六 | 40h | 40h |
| 104 | 1.3.6.4.3 | 邮件审批 | 2d | 2011-05-04 A | 2011-05-05 A | 103 | 100% | 2011-05-04 | 2011-05-05 | start no earlier than 2008-09-08 | 王六 | 16h | 16h |
| 105 | 1.3.6.4.4 | 人员和权限 | 2d | 2011-05-06 A | 2011-05-09 A | 104 | 100% | 2011-05-06 | 2011-05-09 |  | 王六 | 16h | 16h |
| 106 | 1.3.6.4.5 | 前台展现 | 5d | 2011-05-10 A | 2011-05-16 A | 105 | 100% | 2011-05-10 | 2011-05-16 | finish no earlier than 2008-09-12 | 王六 | 40h | 40h |
| 107 | 1.3.6.4.6 | 后台管理 | 20d | 2011-05-17 A | 2011-06-13 A | 106 | 100% | 2011-05-17 | 2011-05-23 |  | 王六 | 160h | 160h |
| 108 | 1.3.6.5 | **第三方系统集成接口开发** | 27d? | 2011-06-10 A | 2011-07-18 A |  | 100% | 2011-05-24 | 2011-06-20 |  |  | 312h | 312h |
| 109 | 1.3.6.5.1 | Web Service接口 | 3d | 2011-06-14 A | 2011-06-16 A | 107 | 100% | 2011-05-24 | 2011-05-26 |  | 王六 | 24h | 24h |
| 110 | 1.3.6.5.2 | Web Service并发压力测试 | 5d | 2011-07-04 A | 2011-07-08 A |  | 100% | 2011-05-27 | 2011-06-02 | start no earlier than 2011-07-04 | 王六 | 40h | 40h |
| 111 | 1.3.6.5.3 | Web Service测试报告及调整 | 5d | 2011-07-11 A | 2011-07-15 A | 110 | 100% | 2011-06-03 | 2011-06-09 |  | 王六 | 40h | 40h |
| 112 | 1.3.6.5.4 | Web Service解密可行性论证 | 9d? | 2011-06-21 A | 2011-07-01 A |  | 100% |  |  | finish no earlier than 2011-07-01 | 王六 | 72h | 72h |
| 113 | 1.3.6.5.5 | WCF解密实现 | 10d | 2011-07-04 A | 2011-07-15 A | 112 | 100% |  |  |  | 王六 | 80h | 80h |
| 114 | 1.3.6.5.6 | API接口 | 2d | 2011-06-10 A | 2011-07-18 A | 113 | 100% | 2011-06-10 | 2011-06-13 | finish no earlier than 2008-09-16 | 王六 | 16h | 16h |
| 115 | 1.3.6.5.7 | HttpHandler | 3d | 2011-06-14 A | 2011-06-16 A | 114 | 100% | 2011-06-14 | 2011-06-16 |  | 王六 | 24h | 24h |
| 116 | 1.3.6.5.8 | COM组件 | 2d | 2011-06-17 A | 2011-06-20 A | 115 | 100% | 2011-06-17 | 2011-06-20 |  | 王六 | 16h | 16h |

Notes:
- 114: C#和Java接口
- 116: SharePoint COM组件

| ID | WBS | Task | Type | Duration | Start | Finish | Predecessors | Complete | Remaining | Baseline start | Baseline finish | Baseline duration | Baseline 1 start | Baseline 1 finish | Total slack | Free slack | Constraint | Resources | Work | Actual work | Cost | Actual cost |
| --- | --- | --- | --- | --- | --- | --- | --- | --- | --- | --- | --- | --- | --- | --- | --- | --- | --- | --- | --- | --- | --- | --- |
| 117 | 1.3.6.6 | **RMS管理网站开发** |  | 13d | 2011-05-24 A | 2011-06-09 A |  | 100% |  |  |  |  | 2011-05-24 | 2011-06-09 |  |  |  |  | 104h | 104h |  |  |
| 118 | 1.3.6.6.1 | File Server监控 |  | 2d | 2011-05-24 A | 2011-05-25 A | 107 | 100% |  |  |  |  | 2011-05-24 | 2011-05-25 |  |  | finish no earlier than 2008-09-18 | 李四 | 16h | 16h |  |  |
| 119 | 1.3.6.6.2 | 权限策略模版开发 |  | 2d | 2011-05-26 A | 2011-05-27 A | 118 | 100% |  |  |  |  | 2011-05-26 | 2011-05-27 |  |  |  | 李四 | 16h | 16h |  |  |
| 120 | 1.3.6.6.3 | 网站后台 |  | 3d | 2011-05-30 A | 2011-06-01 A | 119 | 100% |  |  |  |  | 2011-05-30 | 2011-06-01 |  |  | start no earlier than 2008-09-17 | 李四 | 24h | 24h |  |  |
| 121 | 1.3.6.6.4 | 网站前台 |  | 3d | 2011-06-02 A | 2011-06-06 A | 120 | 100% |  |  |  |  | 2011-06-02 | 2011-06-06 |  |  | start no earlier than 2008-09-19 | 李四 | 24h | 24h |  |  |
| 122 | 1.3.6.6.5 | 服务器产品上传 |  | 3d | 2011-06-07 A | 2011-06-09 A | 121 | 100% |  |  |  |  | 2011-06-07 | 2011-06-09 |  |  |  | 李四 | 24h | 24h |  |  |
| 123 | 1.3.7 | 系统功能集成讨论 |  | 4d | 2011-06-21 A | 2011-07-25 A | 79 | 100% |  |  |  |  |  |  |  |  |  | 项目组 | 32h | 32h | 32 | 32 |
| 124 | 1.3.8 | 系统功能集成执行 |  | 5d | 2011-06-23 A | 2011-08-01 A | 123 | 100% |  |  |  |  |  |  |  |  |  | 项目组 | 40h | 40h | 40 | 40 |
| 125 | 1.3.9 | 系统功能集成调整 |  | 5d | 2011-08-01 A | 2011-08-08 A | 124 | 100% |  |  |  |  |  |  |  |  |  | 项目组 | 40h | 40h | 40 | 40 |
| 126 | 1.3.10 | 非Office加密文件扩展名修改 |  | 2d | 2011-08-18 | 2011-08-19 |  |  |  |  |  |  |  |  | 2.94d | 0d | start no earlier than 2011-08-18 | 张四; 王六 | 32h |  |  |  |
| 127 | 1.3.11 | 非Office加密文件图标修改部署 |  | 2d | 2011-08-22 | 2011-08-23 |  |  |  |  |  |  |  |  | 41.94d |  | start no earlier than 2011-08-22 | 田七 | 16h |  |  |  |
| 128 | 1.3.12 | 非Office加密文件查看及修改方式调整 |  | 7d | 2011-08-22 | 2011-08-30 | 126 |  |  |  |  |  |  |  | 2.94d | 0d |  | 张四; 王六 | 112h |  |  |  |
| 129 | 1.3.13 | 客户端证书初始化工具 |  | 3d | 2011-08-31 | 2011-09-02 | 128 |  |  |  |  |  |  |  | 2.94d | 0d |  | 张四; 王六 | 48h |  |  |  |
| 130 | 1.3.14 | 系统功能内部评审及修改 |  | 2d | 2011-09-05 | 2011-09-06 | 129 |  |  |  |  |  | 2011-06-21 | 2011-06-22 | 2.94d | 0d |  | 张三; 张四; 王六 | 48h |  |  |  |
| 131 | 1.3.15 | 系统功能评审及确认 | milestone | 1d | 2011-09-07 | 2011-09-07 | 130 |  |  |  |  |  | 2011-06-23 | 2011-06-23 | 2.94d | 0d |  | 李五; 张三; 张四 | 24h |  |  |  |
| 132 | 1.3.16 | **测试** |  | 87d | 2011-06-14 A | 2011-10-12 |  | 31% | 60.34d | 2006-09-06 | 2006-09-27 | 16d | 2011-05-24 | 2011-07-22 | 2.94d | 0d |  |  | 688h | 152h | 256 | 112 |
| 133 | 1.3.16.1 | **功能测试** |  | 14d | 2011-06-14 A | 2011-07-01 A |  | 100% |  | 2006-09-06 | 2006-09-11 | 4d | 2011-05-24 | 2011-06-10 |  |  |  |  | 112h | 112h | 112 | 112 |
| 134 | 1.3.16.1.1 | 功能测试用例调整 |  | 3d | 2011-06-14 A | 2011-06-16 A | 101 | 100% |  | 2006-09-06 | 2006-09-06 | 1d | 2011-05-24 | 2011-05-26 |  |  | start no earlier than 2008-09-17 | 测试组 | 24h | 24h | 24 | 24 |
| 135 | 1.3.16.1.2 | 功能测试用例执行 |  | 4d | 2011-06-17 A | 2011-06-22 A | 134 | 100% |  | 2006-09-08 | 2006-09-08 | 1d | 2011-05-27 | 2011-06-01 |  |  | finish no earlier than 2008-09-26 | 测试组 | 32h | 32h | 32 | 32 |
| 136 | 1.3.16.1.3 | 功能缺陷修复 |  | 3d | 2011-06-23 A | 2011-06-27 A | 135 | 100% |  |  |  |  | 2011-06-02 | 2011-06-06 |  |  |  | 开发组 | 24h | 24h | 24 | 24 |
| 137 | 1.3.16.1.4 | 功能回顾/报告 |  | 4d | 2011-06-28 A | 2011-07-01 A | 136 | 100% |  | 2006-09-08 | 2006-09-08 | 1d | 2011-06-07 | 2011-06-10 |  |  | start no earlier than 2008-09-26 | 测试组 | 32h | 32h | 32 | 32 |
| 138 | 1.3.16.2 | 润和加解密联调 |  | 10d | 2011-08-08 A | 2011-08-19 |  | 50% | 5d |  |  |  |  |  | 40.94d |  | start no earlier than 2011-08-08 | 张三 | 80h | 40h |  |  |
| 139 | 1.3.16.3 | **Conference Room Pilot 测试** |  | 8d | 2011-09-08 | 2011-09-19 |  |  |  | 2006-09-12 | 2006-09-27 | 12d | 2011-06-13 | 2011-06-16 | 2.94d |  |  |  | 240h |  |  |  |
| 140 | 1.3.16.3.1 | 测试场景准备 |  | 3d | 2011-09-08 | 2011-09-12 | 131 |  |  | 2006-09-13 | 2006-09-19 | 5d | 2011-06-13 | 2011-06-13 | 2.94d | 0d | start no earlier than 2008-09-17 | 张三; 王六; 张四; 李四 | 96h |  |  |  |
| 141 | 1.3.16.3.2 | 测试环境准备 |  | 3d | 2011-09-13 | 2011-09-15 | 140 |  |  | 2006-09-20 | 2006-09-20 | 1d | 2011-06-14 | 2011-06-14 | 2.94d | 0d |  | 张三; 张四; 王六; 李四 | 96h |  |  |  |

| ID | WBS | Task | Type | Duration | Start | Finish | Predecessors | Baseline start | Baseline finish | Baseline duration | Baseline 1 start | Baseline 1 finish | Total slack | Free slack | Constraint | Resources | Work | Cost | 交付物 |
| --- | --- | --- | --- | --- | --- | --- | --- | --- | --- | --- | --- | --- | --- | --- | --- | --- | --- | --- | --- |
| 142 | 1.3.16.3.3 | **关键用户培训** |  | 2d | 2011-09-16 | 2011-09-19 |  | 2006-09-12 | 2006-09-12 | 1d | 2011-06-15 | 2011-06-16 | 2.94d | 0d |  |  | 48h |  |  |
| 143 | 1.3.16.3.3.1 | IT用户培训 |  | 1d | 2011-09-16 | 2011-09-16 | 141 |  |  |  | 2011-06-15 | 2011-06-15 | 2.94d | 0d |  | 张四; 张三; 李四 | 24h |  |  |
| 144 | 1.3.16.3.3.2 | 业务用户培训 |  | 1d | 2011-09-19 | 2011-09-19 | 143 |  |  |  | 2011-06-16 | 2011-06-16 | 2.94d |  | start no earlier than 2008-09-19 | 张四; 张三; 李四 | 24h |  |  |
| 145 | 1.3.16.4 | UAT测试 |  | 15d | 2011-09-20 | 2011-10-10 | 142 | 2006-09-21 | 2006-09-27 | 5d | 2011-06-17 | 2011-07-07 | 2.94d | 0d |  | 关键用户 | 120h | 120 | UAT场景测试 |
| 146 | 1.3.16.5 | UAT回顾/报告 |  | 2d | 2011-10-11 | 2011-10-12 | 145 |  |  |  | 2011-07-08 | 2011-07-11 | 2.94d |  |  | 张三; 张四 | 32h |  |  |
| 147 | 1.3.16.6 | 修复缺陷 |  | 3d | 2011-09-23 | 2011-09-27 | 145SS+3d | 2006-09-06 | 2006-09-27 | 16d | 2011-06-22 | 2011-06-24 | 13.94d |  | start no earlier than 2008-09-24 | 开发组 | 24h | 24 |  |
| 148 | 1.3.16.7 | 制定推广计划 |  | 5d | 2011-09-20 | 2011-09-26 | 142 |  |  |  | 2011-06-17 | 2011-06-23 | 14.94d |  |  | 客户 | 40h |  |  |
| 149 | 1.3.16.8 | 建立服务支持模型 |  | 5d | 2011-09-20 | 2011-09-26 | 142 |  |  |  | 2011-07-18 | 2011-07-22 | 14.94d |  | start no earlier than 2011-07-18 | 客户 | 40h |  |  |
| 150 | 1.3.17 | 系统测试内部评审及修改 |  | 2d | 2011-10-13 | 2011-10-14 | 132 |  |  |  | 2011-07-25 | 2011-07-26 | 2.94d | 0d |  | 项目组 | 16h | 16 |  |
| 151 | 1.3.18 | 系统测试评审及确认 | milestone | 1d? | 2011-10-17 | 2011-10-17 | 150 |  |  |  | 2011-07-27 | 2011-07-27 | 2.94d |  |  | 李五; 张三; 张四 | 24h |  |  |
| 152 | 1.4 | **Stabilize** |  | 24d? | 2011-10-20 | 2011-11-23 |  | 2006-09-28 | 2006-10-03 | 4d | 2011-07-28 | 2011-08-30 | 0d |  |  |  | 392h | 48 |  |
| 153 | 1.4.1 | **里程碑** |  | 0d | 2011-11-23 | 2011-11-23 |  | 2006-10-02 | 2006-10-02 | 0d | 2011-08-30 | 2011-08-30 | 0d |  |  |  |  |  |  |
| 154 | 1.4.1.1 | 用户试用评审及确认 | milestone | 0d | 2011-11-23 | 2011-11-23 | 167FF | 2006-10-02 | 2006-10-02 | 0d | 2011-08-30 | 2011-08-30 | 0d |  | start no earlier than 2008-10-03 |  |  |  | 用户试用报告 |
| 155 | 1.4.2 | **系统部署与配置** |  | 5d | 2011-10-20 | 2011-10-27 |  | 2006-09-28 | 2006-10-02 | 3d | 2011-07-28 | 2011-08-03 | 0d |  |  |  | 104h |  |  |
| 156 | 1.4.2.1 | 基础架构部署 |  | 1d | 2011-10-20 | 2011-10-21 | 62 | 2006-09-28 | 2006-09-28 | 1d | 2011-07-28 | 2011-07-28 | 0d |  | start no earlier than 2008-09-24 | 李五; 张四; 张三 | 24h |  |  |
| 157 | 1.4.2.2 | 应用程序部署 |  | 1d | 2011-10-21 | 2011-10-24 | 156 | 2006-09-28 | 2006-09-29 | 2d | 2011-07-29 | 2011-07-29 | 0d |  | finish no earlier than 2008-09-25 | 李五; 张四; 张三 | 24h |  |  |
| 158 | 1.4.2.3 | 应用程序配置 |  | 1d | 2011-10-24 | 2011-10-25 | 157 |  |  |  | 2011-08-01 | 2011-08-01 | 0d |  | start no earlier than 2008-09-26 | 李五; 张四; 张三 | 24h |  |  |
| 159 | 1.4.2.4 | 编写系统部署文档 |  | 2d | 2011-10-25 | 2011-10-27 | 158 |  |  |  | 2011-08-02 | 2011-08-03 | 0d |  | finish no earlier than 2008-09-26 | 李四; 张三 | 32h |  |  |
| 160 | 1.4.3 | **Roll out** |  | 13d | 2011-10-27 | 2011-11-15 |  | 2006-09-28 | 2006-10-02 | 3d | 2011-08-04 | 2011-08-22 | 0d |  |  |  | 264h | 24 |  |
| 161 | 1.4.3.1 | 用户培训 |  | 5d | 2011-10-27 | 2011-11-03 | 155 | 2006-09-28 | 2006-09-28 | 1d | 2011-08-04 | 2011-08-10 | 0d |  | start no earlier than 2008-09-29 | 张四; 张三; 李四 | 120h |  |  |
| 162 | 1.4.3.2 | 用户试用 |  | 3d | 2011-11-03 | 2011-11-08 | 161 | 2006-09-28 | 2006-09-29 | 2d | 2011-08-11 | 2011-08-15 | 0d |  | finish no earlier than 2008-10-03 | 关键用户 | 24h | 24 |  |
| 163 | 1.4.3.3 | 收集反馈 |  | 2d | 2011-11-08 | 2011-11-10 | 162 |  |  |  | 2011-08-16 | 2011-08-17 | 0d |  | finish no earlier than 2008-10-03 | 张四; 张三; 李五 | 48h |  |  |
| 164 | 1.4.3.4 | 反馈分析与功能改进确认 |  | 3d | 2011-11-10 | 2011-11-15 | 163 |  |  |  | 2011-08-18 | 2011-08-22 | 0d |  | finish no earlier than 2008-10-03 | 张四; 张三; 李五 | 72h |  |  |
| 165 | 1.4.4 | 功能改进点开发 |  | 3d | 2011-11-15 | 2011-11-18 | 160 | 2006-09-28 | 2006-09-29 | 2d | 2011-08-23 | 2011-08-25 | 0d |  | finish no earlier than 2008-10-08 | 开发组 | 24h | 24 |  |
| 166 | 1.4.5 | 用户试用内部评审及修改 |  | 2d | 2011-11-18 | 2011-11-22 | 165 |  |  |  | 2011-08-26 | 2011-08-29 | 0d |  |  |  |  |  |  |
| 167 | 1.4.6 | 用户试用评审及确认 | milestone | 1d? | 2011-11-22 | 2011-11-23 | 166 |  |  |  | 2011-08-30 | 2011-08-30 | 0d |  |  |  |  |  |  |

| ID | WBS | Task | Type | Duration | Start | Finish | Predecessors | Baseline start | Baseline finish | Baseline duration | Baseline 1 start | Baseline 1 finish | Total slack | Constraint | Resources | Work | Cost | 交付物 |
| --- | --- | --- | --- | --- | --- | --- | --- | --- | --- | --- | --- | --- | --- | --- | --- | --- | --- | --- |
| 168 | 1.5 | **Deploy** |  | 19d | 2011-11-23 | 2011-12-20 |  | 2006-10-04 | 2006-10-18 | 11d | 2011-08-31 | 2011-09-28 | 0d |  |  | 312h | 8 |  |
| 169 | 1.5.1 | **里程碑** |  | 0d | 2011-12-16 | 2011-12-16 |  | 2006-10-04 | 2006-10-04 | 0d | 2011-09-26 | 2011-09-26 | 2d |  |  |  |  |  |
| 170 | 1.5.1.1 | 系统上线验收评审及确认 | milestone | 0d | 2011-12-16 | 2011-12-16 | 184FF | 2006-10-04 | 2006-10-04 | 0d | 2011-09-26 | 2011-09-26 | 2d | start no earlier than 2008-10-08 |  |  |  | 系统最终上线需要的所有提交件 |
| 171 | 1.5.2 | **系统部署与配置** |  | 5d | 2011-11-23 | 2011-11-30 |  | 2006-10-04 | 2006-10-18 | 11d | 2011-08-31 | 2011-09-08 | 0d |  |  | 80h |  |  |
| 172 | 1.5.2.1 | 基础架构部署 |  | 1d | 2011-11-23 | 2011-11-24 | 152 | 2006-10-04 | 2006-10-04 | 1d | 2011-08-31 | 2011-08-31 | 0d | start no earlier than 2008-10-06 | 李五; 张三 | 16h |  |  |
| 173 | 1.5.2.2 | 应用程序部署 |  | 1d | 2011-11-24 | 2011-11-25 | 172 | 2006-09-28 | 2006-09-29 | 2d | 2011-09-01 | 2011-09-01 | 0d | start no earlier than 2008-10-07 | 李五; 张三 | 16h |  |  |
| 174 | 1.5.2.3 | 应用程序配置 |  | 1d | 2011-11-25 | 2011-11-28 | 173 |  |  |  | 2011-09-02 | 2011-09-02 | 0d | finish no earlier than 2008-10-08 | 李五; 张三 | 16h |  |  |
| 175 | 1.5.2.4 | 生产环境验证 |  | 2d | 2011-11-28 | 2011-11-30 | 174 |  |  |  | 2011-09-07 | 2011-09-08 | 0d | start no earlier than 2011-09-07 | 张三; 李五 | 32h |  | Use Case测试验证 |
| 176 | 1.5.3 | **文档准备** |  | 6d | 2011-11-30 | 2011-12-08 |  |  |  |  | 2011-09-09 | 2011-09-16 | 0d |  |  | 96h |  |  |
| 177 | 1.5.3.1 | 编写用户手册 |  | 2d | 2011-11-30 | 2011-12-02 | 171 |  |  |  | 2011-09-09 | 2011-09-12 | 0d | finish no earlier than 2008-10-01 | 张三; 李四 | 32h |  |  |
| 178 | 1.5.3.2 | 编写应急手册 |  | 2d | 2011-12-02 | 2011-12-06 | 177 |  |  |  | 2011-09-13 | 2011-09-14 | 0d | finish no earlier than 2008-10-03 | 张三; 李四 | 32h |  |  |
| 179 | 1.5.3.3 | 编写运维手册 |  | 2d | 2011-12-06 | 2011-12-08 | 178 |  |  |  | 2011-09-15 | 2011-09-16 | 0d | finish no earlier than 2008-10-10 | 张三; 李四 | 32h |  |  |
| 180 | 1.5.4 | **技术转移** |  | 4d | 2011-12-08 | 2011-12-14 |  |  |  |  | 2011-09-19 | 2011-09-22 | 0d |  |  | 96h |  |  |
| 181 | 1.5.4.1 | 技术转移资料整理 |  | 2d | 2011-12-08 | 2011-12-12 | 176 |  |  |  | 2011-09-19 | 2011-09-20 | 0d | finish no earlier than 2008-10-03 | 李四; 张三; 张四 | 48h |  |  |
| 182 | 1.5.4.2 | 技术转移培训 |  | 2d | 2011-12-12 | 2011-12-14 | 181 |  |  |  | 2011-09-21 | 2011-09-22 | 0d | finish no earlier than 2008-10-10 | 李四; 张三; 张四 | 48h |  |  |
| 183 | 1.5.5 | 系统上线验收内部评审及调整 |  | 1d | 2011-12-14 | 2011-12-15 | 180 |  |  |  | 2011-09-23 | 2011-09-23 | 0d |  | 开发组 | 8h | 8 |  |
| 184 | 1.5.6 | 系统上线验收评审及确认 | milestone | 1d | 2011-12-15 | 2011-12-16 | 183 |  |  |  | 2011-09-26 | 2011-09-26 | 0d |  | 客户; 张三 | 16h |  |  |
| 185 | 1.5.7 | 项目总结大会 |  | 2d | 2011-12-16 | 2011-12-20 | 184 |  |  |  | 2011-09-27 | 2011-09-28 | 0d |  | 客户 | 16h |  |  |
